# Plan de Trabajo

Schedule from MS Project, 2022-03-17 to 2022-05-22, A marks actual dates.

## Calendars

- Estándar: Mon-Fri 09:00-13:00, 15:00-19:00; Sat-Sun 08:00-17:00.

## Resources

| Resource |
| --- |
| Equipo de desarrollo |
| Johan Carrillo |
| Mario Sinay |
| Jhensser Aguirre |
| Jorge Muñoz |
| Sara Ocalle |
| Sara Ovalle |
| E4 |

## Schedule

| ID | WBS | Task | Duration | Start | Finish | Predecessors | Complete | Remaining | Total slack | Free slack | Resources | Work | Actual work |
| --- | --- | --- | --- | --- | --- | --- | --- | --- | --- | --- | --- | --- | --- |
| 1 | 1 | **Proyecto de Sistema para Clinica Médica** | 69d | 2022-03-17 A | 2022-05-22 |  | 94% | 4.29d | 0d |  |  | 2104h | 1801.32h |
| 2 | 1.1 | **Inicio** | 15.5d | 2022-03-17 A | 2022-03-31 A |  | 100% |  |  |  |  | 120h | 120h |
| 3 | 1.1.1 | Estudio de información de las instituciones médicas centralizadas en la historia clínica | 2d | 2022-03-17 A | 2022-03-18 A |  | 100% |  |  |  | Equipo de desarrollo | 16h | 16h |
| 4 | 1.1.2 | Estudio de la estructura organizacional de una clínica médica | 2d | 2022-03-17 A | 2022-03-18 A |  | 100% |  |  |  | Equipo de desarrollo | 16h | 16h |
| 5 | 1.1.3 | Estudio de factibilidad económico | 2d | 2022-03-17 A | 2022-03-18 A |  | 100% |  |  |  | Equipo de desarrollo | 16h | 16h |
| 6 | 1.1.4 | Acta de Constitución | 4d | 2022-03-21 A | 2022-03-24 A | 5 | 100% |  |  |  | Johan Carrillo | 32h | 32h |
| 7 | 1.1.5 | Realizar Dercas | 2d | 2022-03-25 A | 2022-03-28 A | 6 | 100% |  |  |  | Equipo de desarrollo | 16h | 16h |
| 8 | 1.1.6 | Reunión Inicial de Proyecto (Kick Off) | 3d | 2022-03-29 A | 2022-03-31 A | 7 | 100% |  |  |  | Equipo de desarrollo | 24h | 24h |
| 9 | 1.2 | **Planificación** | 20.75d | 2022-03-17 A | 2022-04-05 A |  | 100% |  |  |  |  | 136h | 136h |
| 10 | 1.2.1 | **Toma de Requerimientos** | 20.75d | 2022-03-17 A | 2022-04-05 A |  | 100% |  |  |  |  | 136h | 136h |
| 11 | 1.2.1.1 | Tomar Requerimiento Funcionales | 2d | 2022-04-01 A | 2022-04-04 A | 8 | 100% |  |  |  | Equipo de desarrollo | 16h | 16h |
| 12 | 1.2.1.2 | Tomar Requerimientos no Funcionales | 2d | 2022-03-17 A | 2022-03-18 A | 8 | 100% |  |  |  | Equipo de desarrollo | 16h | 16h |
| 13 | 1.2.1.3 | Definir Lenguaje de Programación | 1d | 2022-03-21 A | 2022-03-21 A | 12 | 100% |  |  |  | Equipo de desarrollo | 8h | 8h |
| 14 | 1.2.1.4 | Definir IDE a utilizar | 1d | 2022-03-17 A | 2022-03-17 A | 12 | 100% |  |  |  | Equipo de desarrollo | 8h | 8h |
| 15 | 1.2.1.5 | Definir Base de Datos | 1d | 2022-03-22 A | 2022-03-22 A | 13 | 100% |  |  |  | Johan Carrillo | 8h | 8h |
| 16 | 1.2.1.6 | Realizar Diagrama de Entidad Relación | 2d | 2022-03-23 A | 2022-03-24 A | 15 | 100% |  |  |  | Johan Carrillo | 16h | 16h |
| 17 | 1.2.1.7 | **Desarrollo de Diagramas UML** | 12.5d | 2022-03-25 A | 2022-04-05 A |  | 100% |  |  |  |  | 64h | 64h |
| 18 | 1.2.1.7.1 | Diagrama de Casos de uso | 1d | 2022-03-25 A | 2022-03-25 A | 16 | 100% |  |  |  | Mario Sinay | 8h | 8h |
| 19 | 1.2.1.7.2 | Diagrama de Clases | 3d | 2022-03-28 A | 2022-03-30 A | 18 | 100% |  |  |  | Jhensser Aguirre | 24h | 24h |
| 20 | 1.2.1.7.3 | Diagrama de Secuencias | 2d | 2022-03-31 A | 2022-04-01 A | 19 | 100% |  |  |  | Jorge Muñoz | 16h | 16h |
| 21 | 1.2.1.7.4 | Diagrama de Actividades | 2d | 2022-04-04 A | 2022-04-05 A | 20 | 100% |  |  |  | Sara Ovalle | 16h | 16h |
| 22 | 1.3 | **Ejecución** | 45.6d | 2022-03-29 A | 2022-05-12 | 9 | 99% | 0.52d | 0d | 10.9d |  | 1536h | 1345.32h |
| 23 | 1.3.1 | Realizar Mockups | 4d | 2022-03-29 A | 2022-04-03 A | 7 | 100% |  |  |  | Equipo de desarrollo | 32h | 32h |
| 24 | 1.3.2 | Implementacion del ambiente para desarrollo | 1d | 2022-03-29 A | 2022-03-29 A | 7 | 100% |  |  |  | Equipo de desarrollo | 8h | 8h |
| 25 | 1.3.3 | Realizar la Base de Datos | 5d | 2022-03-30 A | 2022-04-05 A | 24 | 100% |  |  |  | Johan Carrillo | 40h | 40h |

| ID | WBS | Task | Duration | Start | Finish | Predecessors | Complete | Remaining | Total slack | Free slack | Resources | Work | Actual work |
| --- | --- | --- | --- | --- | --- | --- | --- | --- | --- | --- | --- | --- | --- |
| 26 | 1.3.4 | **Desarrollar Backend** | 37.35d | 2022-04-06 A | 2022-05-12 | 25 | 98% | 0.7d | 0d | 10.9d |  | 1048h | 874.8h |
| 27 | 1.3.4.1 | Creacion de conexión a la base de datos | 3d | 2022-04-06 A | 2022-04-08 A | 25 | 100% |  |  |  | Equipo de desarrollo | 24h | 24h |
| 28 | 1.3.4.2 | Configuracion de la base de datos | 3d | 2022-04-11 A | 2022-04-13 A | 27 | 100% |  |  |  | Equipo de desarrollo | 24h | 24h |
| 29 | 1.3.4.3 | Implemenacion de plugin y o librerias | 1d | 2022-04-09 A | 2022-04-09 A | 27 | 100% |  |  |  | Equipo de desarrollo | 8h | 8h |
| 30 | 1.3.4.4 | **Crear servicios** | 15d | 2022-04-14 A | 2022-04-28 | 28 | 97% | 0.39d | 0d | 25d | Equipo de desarrollo | 872h | 698.8h |
| 31 | 1.3.4.4.1 | Login | 3d | 2022-04-14 A | 2022-04-18 A | 28 | 100% |  |  |  | Johan Carrillo | 24h | 24h |
| 32 | 1.3.4.4.2 | Inicio | 3d | 2022-04-14 A | 2022-04-16 A | 28 | 100% |  |  |  | Johan Carrillo | 24h | 24h |
| 33 | 1.3.4.4.3 | Usuarios | 3d | 2022-04-14 A | 2022-04-16 A | 28 | 100% |  |  |  | Jhensser Aguirre | 24h | 24h |
| 34 | 1.3.4.4.4 | **Citas** | 10d | 2022-04-14 A | 2022-04-23 | 28 | 99% | 0d | 0d |  | Mario Sinay | 224h | 188.8h |
| 35 | 1.3.4.4.4.1 | Detalle de citas | 10d | 2022-04-14 A | 2022-04-23 A |  | 100% |  |  |  | Mario Sinay | 80h | 80h |
| 36 | 1.3.4.4.4.2 | Sucursales | 8d | 2022-04-14 A | 2022-04-21 A |  | 100% |  |  |  | Mario Sinay | 64h | 64h |
| 37 | 1.3.4.4.5 | **Pacientes** | 15d | 2022-04-14 A | 2022-04-28 | 28 | 90% | 1.5d | 0d | 25d | Jorge Muñoz | 240h | 216h |
| 38 | 1.3.4.4.5.1 | Historial médico | 15d | 2022-04-14 A | 2022-04-28 A | 28 | 100% |  |  |  | Jorge Muñoz | 120h | 120h |
| 39 | 1.3.4.4.6 | **Empleados** | 8d | 2022-04-14 A | 2022-04-21 A | 28 | 100% |  |  |  | Sara Ovalle | 128h | 128h |
| 40 | 1.3.4.4.6.1 | Puestos | 8d | 2022-04-14 A | 2022-04-21 A |  | 100% |  |  |  | Sara Ovalle | 64h | 64h |
| 41 | 1.3.4.4.7 | Inventario y Tienda | 5d | 2022-04-14 A | 2022-04-18 A | 28 | 100% |  |  |  | Johan Carrillo | 40h | 40h |
| 42 | 1.3.4.4.8 | Ramas médicas | 3d | 2022-04-14 A | 2022-04-16 A | 28 | 100% |  |  |  | Jhensser Aguirre; Sara Ovalle | 48h | 48h |
| 43 | 1.3.4.5 | Crear las conexiones con el frontend | 15d | 2022-04-22 A | 2022-05-12 A | 30 | 100% |  |  |  | Equipo de desarrollo | 120h | 120h |
| 44 | 1.3.5 | **Desarrollar Frontend** | 19d | 2022-04-14 A | 2022-05-02 |  | 99% | 0d | 0d |  |  | 352h | 334.92h |
| 45 | 1.3.5.1 | **Creacion de la vistas** | 9.25d | 2022-04-14 A | 2022-04-22 |  | 99% | 0d | 0d |  | Equipo de desarrollo | 240h | 222.92h |
| 46 | 1.3.5.1.1 | Login | 3d | 2022-04-20 A | 2022-04-22 A | 28 | 100% |  |  |  | Johan Carrillo | 24h | 24h |
| 47 | 1.3.5.1.2 | Inicio | 3d | 2022-04-20 A | 2022-04-22 A | 28 | 100% |  |  |  | Johan Carrillo | 24h | 24h |
| 48 | 1.3.5.1.3 | Usuarios | 3d | 2022-04-14 A | 2022-04-16 A | 28 | 100% |  |  |  | Jhensser Aguirre | 24h | 24h |
| 49 | 1.3.5.1.4 | Citas | 5d | 2022-04-14 A | 2022-04-18 A | 28 | 100% |  |  |  | Mario Sinay | 40h | 40h |
| 50 | 1.3.5.1.5 | Pacientes | 3d | 2022-04-14 A | 2022-04-16 A | 28 | 100% |  |  |  | Jorge Muñoz | 24h | 24h |
| 51 | 1.3.5.1.6 | Empleados | 9.25d | 2022-04-14 A | 2022-05-15 A | 28 | 100% |  |  |  | Sara Ovalle | 74h | 74h |
| 52 | 1.3.5.1.7 | Inventario y Tienda | 5d | 2022-04-14 A | 2022-04-18 A | 28 | 100% |  |  |  | Johan Carrillo | 40h | 40h |
| 53 | 1.3.5.1.8 | Ramas médicas | 1d | 2022-04-14 A | 2022-04-14 A | 28 | 100% |  |  |  | Jhensser Aguirre; Sara Ovalle | 16h | 16h |
| 54 | 1.3.5.2 | Implementacion de los servicios | 5d | 2022-04-22 A | 2022-04-29 A | 30 | 100% |  |  |  | Equipo de desarrollo | 40h | 40h |
| 55 | 1.3.5.3 | Consumir los servicios del backend | 5d | 2022-04-27 A | 2022-05-02 A | 54, 45 | 100% |  |  |  | Equipo de desarrollo | 40h | 40h |
| 56 | 1.3.5.4 | Implementacion de un framework | 1d | 2022-04-23 A | 2022-04-27 A | 54 | 100% |  |  |  | Equipo de desarrollo | 8h | 8h |
| 57 | 1.3.5.5 | Consumir un framework | 3d | 2022-04-23 A | 2022-04-28 A | 54 | 100% |  |  |  | Equipo de desarrollo | 24h | 24h |

| ID | WBS | Task | Duration | Start | Finish | Predecessors | Complete | Remaining | Total slack | Free slack | Resources | Work | Actual work |
| --- | --- | --- | --- | --- | --- | --- | --- | --- | --- | --- | --- | --- | --- |
| 58 | 1.3.6 | **Realizar Pruebas de Software** | 3d | 2022-05-02 A | 2022-05-05 |  | 99% | 0.03d | 0d | 18d |  | 56h | 55.6h |
| 59 | 1.3.6.1 | **Pruebas Funcionales** | 1d | 2022-05-02 A | 2022-05-03 |  | 98% | 0.03d | 0d | 20d |  | 32h | 31.6h |
| 60 | 1.3.6.1.1 | Pruebas Unitarias | 1d | 2022-05-02 A | 2022-05-03 A | 44 | 100% |  |  |  | Jhensser Aguirre | 8h | 8h |
| 61 | 1.3.6.1.2 | Pruebas de Integración | 1d | 2022-05-02 A | 2022-05-03 A | 44 | 100% |  |  |  | Mario Sinay; Johan Carrillo; Sara Ovalle | 24h | 24h |
| 62 | 1.3.6.2 | **Pruebas No Funcionales** | 3d | 2022-05-02 A | 2022-05-05 A |  | 100% |  |  |  |  | 24h | 24h |
| 63 | 1.3.6.2.1 | Performance Tesitng | 3d | 2022-05-02 A | 2022-05-05 A | 44 | 100% |  |  |  | Jorge Muñoz | 24h | 24h |
| 64 | 1.4 | **Monitoreo y Control** | 12d | 2022-05-05 A | 2022-05-16 |  | 86% | 1.69d | 0d | 6d |  | 248h | 200h |
| 65 | 1.4.1 | **Desviaciones del Sistema** | 12d | 2022-05-05 A | 2022-05-16 |  | 85% | 1.8d | 0d |  |  | 208h | 164.8h |
| 66 | 1.4.1.1 | Verificar Desviaciones del Sistema | 4d | 2022-05-05 A | 2022-05-08 A | 63 | 100% |  |  |  | Jhensser Aguirre | 32h | 32h |
| 67 | 1.4.1.2 | Documentar Desviaciones del sistema | 2d | 2022-05-09 A | 2022-05-10 A | 66 | 100% |  |  |  | Jhensser Aguirre; Johan Carrillo | 32h | 32h |
| 68 | 1.4.1.3 | Corrección de las Desviaciones Encontradas | 6d | 2022-05-11 A | 2022-05-16 A | 67 | 100% |  |  |  | Jhensser Aguirre; Johan Carrillo; Mario Sinay | 144h | 144h |
| 69 | 1.4.2 | Verificación de estabilidad del sistema | 3d | 2022-05-09 A | 2022-05-11 A | 66 | 100% |  |  |  | Sara Ovalle | 24h | 24h |
| 70 | 1.4.3 | Test de la velocidad de respuesta del sistema | 1d | 2022-05-09 A | 2022-05-09 A | 66 | 100% |  |  |  | Jorge Muñoz | 8h | 8h |
| 71 | 1.4.4 | Correcciones en el plan de trabajo | 1d | 2022-05-10 A | 2022-05-10 A | 70 | 100% |  |  |  | Equipo de desarrollo | 8h | 8h |
| 72 | 1.5 | **Cierre** | 6d | 2022-05-16 | 2022-05-22 |  |  |  | 0d |  |  | 64h |  |
| 73 | 1.5.1 | Finalizar formalmente el proyecto | 3d | 2022-05-16 A | 2022-05-19 A | 68 | 100% |  |  |  | Equipo de desarrollo | 24h | 24h |
| 74 | 1.5.2 | Lecciones Aprendidas | 2d | 2022-05-19 A | 2022-05-21 A | 73 | 100% |  |  |  | Equipo de desarrollo | 16h | 16h |
| 75 | 1.5.3 | Acta de Cierre | 3d | 2022-05-19 | 2022-05-22 | 73 |  |  | 0d |  | Equipo de desarrollo | 24h |  |
